# Obra Exemplo — Cronograma replanejado

Schedule from MS Project XML, 2026-07-24 to 2026-12-02.

## Calendars

- Padrão: Mon-Fri 08:00-12:00, 13:00-17:00; Sat-Sun off.

## Schedule

| ID | WBS | Task | Type | Duration | Start | Finish | Predecessors | Complete |
| --- | --- | --- | --- | --- | --- | --- | --- | --- |
| 1 | 01 | **SERVIÇOS INICIAIS** |  | 94d | 2026-07-24 | 2026-12-02 |  | 72% |
| 2 | 01.01 | **Serviços Técnicos** |  | 86d | 2026-08-05 | 2026-12-02 |  | 85% |
| 3 | 01.01.01 | Fiscalização/Acompanhamento/Gerenciamento - ART |  | 86d | 2026-08-05 | 2026-12-02 |  | 85% |
| 4 | 01.02 | **Serviços Preliminares** |  | 4d | 2026-08-01 | 2026-08-06 |  |  |
| 5 | 01.02.01 | Cópias e Plotagens |  | 5d | 2026-08-01 | 2026-08-06 |  |  |
| 6 | 01.02.02 | Seguros |  | 0d | 2026-08-01 | 2026-08-01 |  |  |
| 7 | 01.03 | **Instalações Provisórias** |  | 19d | 2026-08-01 | 2026-08-27 |  |  |
| 8 | 01.03.01 | **Tapumes/Cercas** |  | 4d | 2026-08-24 | 2026-08-27 |  |  |
| 9 | 01.03.01.01 | Execução de pilaretes para tapumes e construções temporárias |  | 1d | 2026-08-24 | 2026-08-24 |  |  |
| 10 | 01.03.01.02 | tapume com telha metalica |  | 4d | 2026-08-24 | 2026-08-27 |  |  |
| 11 | 01.03.02 | Canteiro de Obras Depósitos/Escritórios/Proteção Transeuntes |  | 1d | 2026-08-01 | 2026-08-01 |  |  |
| 12 | 01.03.03 | **Placa de Obra** |  | 1d | 2026-08-01 | 2026-08-01 |  |  |
| 13 | 01.03.03.01 | Placa de sinalizacao de seguranca contra incendio |  | 1d | 2026-08-01 | 2026-08-01 |  |  |
| 14 | 01.03.03.02 | Placa de sinalizacao em chapa de aluminio com pintura refletiva |  | 1d | 2026-08-01 | 2026-08-01 |  |  |
| 15 | 01.03.04 | Ligação Provisória de Água |  | 1d | 2026-08-01 | 2026-08-01 |  |  |
| 16 | 01.03.05 | Ligação Provisória de Energia |  | 1d | 2026-08-01 | 2026-08-01 |  |  |
| 17 | 01.04 | Mobilização do canteiro |  | 5d | 2026-07-24 | 2026-07-30 |  | 100% |
| 18 | 01.05 | Aprovação do projeto na prefeitura | milestone | 0d | 2026-07-31 | 2026-07-31 | 17 |  |
| 19 | 02 | **ADMINISTRAÇÃO DA OBRA E DESPESAS GERAIS** |  | 10d | 2026-08-01 | 2026-08-14 |  |  |
| 20 | 02.01 | **Administração da Obra e Despesas Gerais** |  | 10d | 2026-08-01 | 2026-08-14 |  |  |
| 21 | 02.01.01 | Consumos Combustíveis e Lubrificantes |  | 8d | 2026-08-05 | 2026-08-14 |  |  |
| 22 | 02.01.02 | Consumos de Água e Luz |  | 2d | 2026-08-01 | 2026-08-03 |  |  |
| 23 | 02.01.03 | EPI/EPC |  | 1d | 2026-08-01 | 2026-08-01 |  |  |
| 24 | 02.01.04 | PCMAT/PCMSO |  | 1d | 2026-08-01 | 2026-08-01 |  |  |

| ID | WBS | Task | Duration | Start | Finish | Predecessors | Complete |
| --- | --- | --- | --- | --- | --- | --- | --- |
| 25 | 03 | **TRABALHOS EM TERRA** | 15d | 2026-08-01 | 2026-08-21 |  | 13% |
| 26 | 03.01 | **Trabalhos em Terra** | 15d | 2026-08-01 | 2026-08-21 |  | 13% |
| 27 | 03.01.01 | Terraplanagem nível +1,19 | 2d | 2026-08-01 | 2026-08-03 | 17 | 100% |
| 28 | 03.01.02 | Compactação de Solo | 1d | 2026-08-04 | 2026-08-04 | 27 |  |
| 29 | 03.01.03 | Bota-Fora (Transporte De Material Excedente) | 13d | 2026-08-05 | 2026-08-21 | 28 |  |
| 30 | 04 | **FUNDAÇÕES** | 85d | 2026-08-05 | 2026-12-01 |  | 5% |
| 31 | 04.01 | **LOCAÇÃO** | 4d | 2026-08-28 | 2026-09-02 |  |  |
| 32 | 04.01.01 | Locação da Obra (Gabarito) | 4d | 2026-08-28 | 2026-09-02 |  |  |
| 33 | 04.02 | **Estaca Hélice Contínua** | 6d | 2026-09-04 | 2026-09-11 |  |  |
| 34 | 04.02.01 | Estaca Hélice Contínua - 6 x C25 - 10m | 1d | 2026-09-04 | 2026-09-04 | 32FS+1d |  |
| 35 | 04.02.02 | Estaca Hélice Contínua - 69 x C30 - 10m | 4d | 2026-09-07 | 2026-09-10 | 34 |  |
| 36 | 04.02.03 | Estaca Hélice Contínua - 9 x C30 - 6m | 1d | 2026-09-11 | 2026-09-11 | 35 |  |
| 37 | 04.03 | **arrasamentos de estacas** | 11d | 2026-09-14 | 2026-09-28 |  |  |
| 38 | 04.03.01 | Arrasamento Mecânico de Estacas | 11d | 2026-09-14 | 2026-09-28 | 36 |  |
| 39 | 04.04 | **BLOCO DE CORoAMENTO e viga baldrame** | 85d | 2026-08-05 | 2026-12-01 |  |  |
| 40 | 04.04.01 | Lastro de Concreto Magro | 6d | 2026-11-18 | 2026-11-25 | 46 |  |
| 41 | 04.04.02 | Escavação Mecanizada | 1d | 2026-09-29 | 2026-09-29 | 38 |  |
| 42 | 04.04.03 | **Formas** | 45d | 2026-09-30 | 2026-12-01 |  |  |
| 43 | 04.04.03.01 | Fabricação | 8d | 2026-09-30 | 2026-10-09 | 41 |  |
| 44 | 04.04.03.02 | Fabricação | 8d | 2026-10-12 | 2026-10-21 | 43 |  |
| 45 | 04.04.03.03 | Fabricação | 7d | 2026-10-22 | 2026-10-30 | 44 |  |
| 46 | 04.04.03.04 | Fabricação | 12d | 2026-11-02 | 2026-11-17 | 45 |  |
| 47 | 04.04.03.05 | Fabricação | 10d | 2026-11-18 | 2026-12-01 | 46 |  |
| 48 | 04.04.04 | Concretagem | 1d | 2026-08-05 | 2026-08-05 |  |  |

| ID | WBS | Task | Duration | Start | Finish | Predecessors | Complete |
| --- | --- | --- | --- | --- | --- | --- | --- |
| 49 | 04.04.05 | **Armação** | 4d | 2026-08-05 | 2026-08-10 |  |  |
| 50 | 04.04.05.01 | Armação de estruturas diversas de concreto armado | 4d | 2026-08-05 | 2026-08-10 |  |  |
| 51 | 04.04.05.02 | Armação de estruturas diversas de concreto armado | 3d | 2026-08-05 | 2026-08-07 |  |  |
| 52 | 04.05 | **CONTENÇÃO VIZINHO** | 13d | 2026-08-06 | 2026-08-24 |  | 40% |
| 53 | 04.05.01 | Escoramentos de Terrenos de Vizinhos | 13d | 2026-08-06 | 2026-08-24 | 48 | 40% |
| 54 | 04.06 | **PROVAS DE CARGA EM ESTACAS** | 8d | 2026-09-04 | 2026-09-15 |  |  |
| 55 | 04.06.01 | Provas de Cargas em Estacas | 8d | 2026-09-04 | 2026-09-15 | 34SS |  |
| 56 | 04.07 | **impermeabilizações** | 6d | 2026-08-25 | 2026-09-01 |  |  |
| 57 | 04.07.01 | Impermeabilização de Baldrames com Manta Asfáltica | 2d | 2026-08-25 | 2026-08-26 | 53 |  |
| 58 | 04.07.02 | Impermeabilização de Muro com Manta Asfáltica | 1d | 2026-09-01 | 2026-09-01 | 57 |  |
