# Obra Exemplo — Estrutura do térreo

Schedule from MS Project XML, 2026-09-01 to 2026-09-16.

## Calendars

- Padrão: Mon-Fri 08:00-12:00, 13:00-17:00; Sat-Sun off.

## Schedule

| ID | WBS | Task | Type | Duration | Start | Finish | Predecessors | Complete |
| --- | --- | --- | --- | --- | --- | --- | --- | --- |
| 1 | 1 | **Estrutura** |  | 12d | 2026-09-01 | 2026-09-16 |  | 30% |
| 2 | 1.1 | Formas do pavimento térreo |  | 4d | 2026-09-01 | 2026-09-04 |  | 100% |
| 3 | 1.2 | Armação do pavimento térreo |  | 4d | 2026-09-03 | 2026-09-08 | 2SS+2d | 60% |
| 4 | 1.3 | Concretagem do pavimento térreo |  | 1d | 2026-09-09 | 2026-09-09 | 3 |  |
| 5 | 1.4 | Cura do concreto |  | 6d | 2026-09-09 | 2026-09-16 | 4FF+5d |  |
| 6 | 1.5 | Desforma |  | 2d | 2026-09-15 | 2026-09-16 | 5SF-1d |  |
| 7 | 1.6 | Laje do térreo liberada | milestone | 0d | 2026-09-16 | 2026-09-16 | 5 |  |
