# CRONOGRAMA.xlsx

Schedule from MS Project XML, 2017-11-14 to 2018-02-05.

## Calendars

- Padrão: Mon-Fri 09:00-12:00, 13:00-18:00; Sat-Sun off.

## Schedule

| ID | WBS | Task | Type | Duration | Start | Finish | Predecessors | Total slack | Work |
| --- | --- | --- | --- | --- | --- | --- | --- | --- | --- |
| 2 | 2 | **Revestimento** |  | 14d | 2017-11-14 | 2017-12-01 |  | 0d | 112h |
| 3 | 2.1 | Revestimento Hall | manual | 2d | 2017-11-14 | 2017-11-15 |  |  | 16h |
| 4 | 2.2 | Piso Hall | manual | 2d | 2017-11-16 | 2017-11-17 | 3 |  | 16h |
| 5 | 2.3 | Revestimento Fachada | manual | 2d | 2017-11-20 | 2017-11-21 | 4 |  | 16h |
| 6 | 2.4 | Pisos das escadas | manual | 4d | 2017-11-22 | 2017-11-27 | 5 |  | 32h |
| 7 | 2.5 | pisos das varandas do 1 e 4 andares | manual | 4d | 2017-11-28 | 2017-12-01 | 6 |  | 32h |
| 8 | 3 | **Construção** |  | 12d | 2017-11-20 | 2017-12-05 |  | 0d | 96h |
| 9 | 3.1 | Churrasqueiras andar 1 | manual | 5d | 2017-11-20 | 2017-11-24 |  |  | 40h |
| 10 | 3.2 | Rampa da garagem | manual | 1d | 2017-11-27 | 2017-11-27 | 9 |  | 8h |
| 11 | 3.3 | Concreto garagem | manual | 1d | 2017-11-28 | 2017-11-28 | 10 |  | 8h |
| 12 | 3.4 | Fechamento tanque incêndio | manual | 3d | 2017-11-29 | 2017-12-01 | 11 |  | 24h |
| 13 | 3.5 | Banheiro do condomínio | manual | 1d | 2017-12-04 | 2017-12-04 | 12 |  | 8h |
| 14 | 3.6 | Dispensa | manual | 1d | 2017-12-05 | 2017-12-05 | 13 |  | 8h |
| 15 | 4 | **Elétrica** |  | 7d? | 2017-11-14 | 2017-11-22 |  | 4d | 144h |
| 16 | 4.1 | **Apartamentos** |  | 3d | 2017-11-20 | 2017-11-22 |  | 0d | 80h |
| 17 | 4.1.1 | Instalação interruptores e tomadas | manual | 3d | 2017-11-20 | 2017-11-22 |  |  | 24h |
| 18 | 4.1.2 | Montagem paineis | manual | 2d | 2017-11-20 | 2017-11-21 |  |  | 16h |
| 19 | 4.1.3 | instalação de luminárias | manual | 5d? | 2017-11-20 | 2017-11-24 |  |  | 40h |
| 20 | 4.2 | **Garagem** |  | 0d | 2017-11-14 | 2017-11-14 |  | 60d | 16h |
| 21 | 4.2.1 | Instalação interruptores e tomadas | manual | 1d | 2017-11-14 | 2017-11-14 |  |  | 8h |
| 22 | 4.2.2 | instalação de luminárias | manual | 1d | 2017-11-14 | 2017-11-14 |  |  | 8h |
| 23 | 4.3 | **Escadas** |  | 0d | 2017-11-14 | 2017-11-14 |  | 60d | 16h |
| 24 | 4.3.1 | Instalação interruptores e tomadas | manual | 1d | 2017-11-14 | 2017-11-14 |  |  | 8h |
| 25 | 4.3.2 | instalação de luminárias | manual | 1d | 2017-11-14 | 2017-11-14 |  |  | 8h |

| ID | WBS | Task | Type | Duration | Start | Finish | Predecessors | Total slack | Work |
| --- | --- | --- | --- | --- | --- | --- | --- | --- | --- |
| 26 | 4.4 | **Elevador** |  | 0d? | 2017-11-14 | 2017-11-14 |  | 60d | 8h |
| 27 | 4.4.1 | Instalação de luminárias | manual | 1d? | 2017-11-14 | 2017-11-14 |  |  | 8h |
| 28 | 4.5 | **Muros** |  | 0d | 2017-11-14 | 2017-11-14 |  | 60d | 16h |
| 29 | 4.5.1 | Instalação interruptores e tomadas | manual | 1d | 2017-11-14 | 2017-11-14 |  |  | 8h |
| 30 | 4.5.2 | Instalação de luminárias | manual | 1d | 2017-11-14 | 2017-11-14 |  |  | 8h |
| 31 | 4.6 | **Incêndio** |  | 0d? | 2017-11-14 | 2017-11-14 |  | 60d | 8h |
| 32 | 4.6.1 | Instalaçao da bomba | manual | 1d? | 2017-11-14 | 2017-11-14 |  |  | 8h |
| 33 | 5 | **Hidráulica** |  | 3d? | 2017-12-06 | 2017-12-08 |  | 0d | 24h |
| 34 | 5.1 | Banheiros - Instalação das loucas | manual | 1d? | 2017-12-06 | 2017-12-06 | 14 |  | 8h |
| 35 | 5.2 | Banheiros - Instalação de metais | manual | 1d? | 2017-12-07 | 2017-12-07 | 34 |  | 8h |
| 36 | 5.3 | Lavanderias - Instalação de pias | manual | 1d? | 2017-12-08 | 2017-12-08 | 35 |  | 8h |
| 37 | 6 | **Pintura** |  | 53d | 2017-11-23 | 2018-02-05 |  | 0d | 424h |
| 38 | 6.1 | Pintura interna - Apartamentos | manual | 20d | 2017-11-23 | 2017-12-20 | 17, 18 |  | 160h |
| 39 | 6.2 | Pintura interna - Escadas | manual | 5d | 2017-12-21 | 2017-12-27 | 38 |  | 40h |
| 40 | 6.3 | Pintura externa - Fachadas | manual | 20d | 2017-12-28 | 2018-01-24 |  |  | 160h |
| 41 | 6.4 | Pintura externa - Muros | manual | 5d | 2018-01-25 | 2018-01-31 | 39 |  | 40h |
| 42 | 6.5 | Pintura externa - Garagem | manual | 3d | 2018-02-01 | 2018-02-05 | 41 |  | 24h |
